# P3_Planejamento v2015 v2 - Completo

How a schedule from MS Project changed from version to version. A marks actual dates.

## Version 1 (saved 2015-02-03)

Note of the change: alteração inteira

| ID | WBS | Task | Duration | Start | Finish | Predecessors | Complete | Total float | Constraint |
| --- | --- | --- | --- | --- | --- | --- | --- | --- | --- |
| 1 | 1 | **Projeto 3** | 51d | 2014-12-16 A | 2015-03-11 |  | 42% | 0d |  |
| 2 | 1.1 | **Documento de Requisito** | 8d | 2014-12-16 A | 2014-12-26 A |  | 100% |  |  |
| 3 |  | Relatorio de Defeitos - v1 | 3d | 2014-12-16 A | 2014-12-18 A |  | 100% |  |  |
| 4 |  | Criar Documento Requisito | 3d | 2014-12-19 A | 2014-12-23 A | 3 | 100% |  |  |
| 5 |  | Verificação Documentos de requisito | 2d | 2014-12-24 A | 2014-12-25 A | 4 | 100% |  |  |
| 6 |  | RTF - Controle - GERENTES | 1d | 2014-12-26 A | 2014-12-26 A | 5 | 100% |  |  |
| 7 | 1.2 | **CICLO I - 4 casos de uso** | 39d | 2015-01-06 A | 2015-03-05 | 2 | 38% | 4d |  |
| 8 | 1.2.1 | **Caso de Uso Geral** | 15d | 2015-01-06 A | 2015-01-26 A |  | 100% |  |  |
| 9 | 1.2.1.1 | **Caso de Uso Alto Nivel** | 6d | 2015-01-06 A | 2015-01-13 A | 6 | 100% |  |  |
| 10 |  | Criar Documento Caso de Uso - Alto Nivel | 2d | 2015-01-06 A | 2015-01-07 A | 6 | 100% |  |  |
| 11 |  | Verificar Documento de Casos de Uso de Alto Nível | 2d | 2015-01-08 A | 2015-01-09 A | 10 | 100% |  |  |
| 12 |  | Corrigir Documento de Casos de Uso de Alto Nível | 2d | 2015-01-12 A | 2015-01-13 A | 11 | 100% |  |  |
| 13 | 1.2.1.2 | **Diagrama de Caso de Uso** | 3d | 2015-01-14 A | 2015-01-16 A | 12 | 100% |  |  |
| 14 |  | Criar Diagrama de Casos de Uso | 1d | 2015-01-14 A | 2015-01-14 A | 12 | 100% |  |  |
| 15 |  | Verificar Diagrama de Casos de Uso | 1d | 2015-01-15 A | 2015-01-15 A | 14 | 100% |  | start no earlier than 2014-12-17 |
| 16 |  | Corrigir Diagrama de Casos de Uso | 1d | 2015-01-16 A | 2015-01-16 A | 15 | 100% |  |  |
| 17 | 1.2.1.3 | **Caso de Uso - Expandido** | 6d | 2015-01-19 A | 2015-01-26 A |  | 100% |  |  |
| 18 |  | Criar Documento de Casos de Uso Expandido | 2d | 2015-01-19 A | 2015-01-20 A | 16 | 100% |  |  |
| 19 |  | Verificar Documento de Casos de Uso Expandido | 2d | 2015-01-21 A | 2015-01-22 A | 18 | 100% |  |  |
| 20 |  | Corrigir Caso de Uso Expandido | 2d | 2015-01-23 A | 2015-01-26 A | 19 | 100% |  |  |
| 21 | 1.2.2 | **Diagrama de Sequencia** | 4d | 2015-02-02 | 2015-02-05 | 8 |  | 4d |  |
| 22 |  | Criar Diagrama de Sequência de Sistema | 2d | 2015-02-02 | 2015-02-03 |  |  | 4d |  |
| 23 |  | Verificar Diagrama de Sequência de Sistema | 1d | 2015-02-04 | 2015-02-04 | 22 |  | 4d |  |
| 24 |  | Corrigir Diagrama de Sequência de Sistema | 1d | 2015-02-05 | 2015-02-05 | 23 |  | 4d |  |
| 25 |  | RTF | 1d | 2015-02-06 | 2015-02-06 | 24 |  | 4d |  |
| 26 | 1.2.4 | **Modelo Conceitual** | 4d | 2015-02-06 | 2015-02-11 | 24, 25SS |  | 4d |  |
| 27 |  | Criar Modelo Conceitual | 2d | 2015-02-06 | 2015-02-09 |  |  | 4d |  |
| 28 |  | Verificar Modelo Conceitual | 1d | 2015-02-10 | 2015-02-10 | 27 |  | 4d |  |
| 29 |  | Corrigir Modelo Conceitual | 1d | 2015-02-11 | 2015-02-11 | 28 |  | 4d |  |
| 30 | 1.2.5 | **Diagrama de Colaboração** | 5d | 2015-02-12 | 2015-02-18 | 26 |  | 4d |  |
| 31 |  | Criar Diagrama de Colaboração (Parte 1.1) | 3d | 2015-02-12 | 2015-02-16 |  |  | 4d |  |
| 32 |  | Verificar Diagrama de Colaboração (Parte 1.1) | 1d | 2015-02-17 | 2015-02-17 | 31 |  | 4d |  |
| 33 |  | Corrigir Diagrama de Colaboração (Parte 1.1) | 1d | 2015-02-18 | 2015-02-18 | 32 |  | 4d |  |
| 34 | 1.2.6 | **Diagrama de Classe** | 5d | 2015-02-19 | 2015-02-25 | 30 |  | 4d |  |
| 35 |  | Criar Diagrama de Classes (Parte 1.1) | 3d | 2015-02-19 | 2015-02-23 |  |  | 4d |  |
| 36 |  | Verificar Diagrama de Classes (Parte 1.1) | 1d | 2015-02-24 | 2015-02-24 | 35 |  | 4d |  |
| 37 |  | Corrigir Diagrama de Classes (Parte 1.1) | 1d | 2015-02-25 | 2015-02-25 | 36 |  | 4d |  |
| 38 | 1.2.7 | **Codificação - Parte 1** | 6d | 2015-02-26 | 2015-03-05 | 34 |  | 4d |  |
| 39 |  | Codificar (Parte 1) | 4d | 2015-02-26 | 2015-03-03 |  |  | 4d |  |
| 40 |  | Verificar Codificação (Parte 1) | 1d | 2015-03-04 | 2015-03-04 | 39 |  | 4d |  |
| 41 |  | Corrigir Codificação (Parte 1) | 1d | 2015-03-05 | 2015-03-05 | 40 |  | 4d |  |
| 42 | 1.3 | **CICLO II - 4 Casos de Uso** | 39d | 2015-01-06 A | 2015-03-05 | 2 | 38% | 0d |  |
| 43 | 1.3.1 | **Caso de Uso Geral** | 15d | 2015-01-06 A | 2015-01-26 A | 8SS | 100% |  |  |
| 44 | 1.3.1.1 | **Caso de Uso Alto Nivel** | 6d | 2015-01-06 A | 2015-01-13 A |  | 100% |  |  |
| 45 |  | Criar Documento Caso de Uso - Alto Nivel | 2d | 2015-01-06 A | 2015-01-07 A |  | 100% |  |  |
| 46 |  | Verificar Documento de Casos de Uso de Alto Nível | 2d | 2015-01-08 A | 2015-01-09 A | 45 | 100% |  |  |
| 47 |  | Corrigir Documento de Casos de Uso de Alto Nível | 2d | 2015-01-12 A | 2015-01-13 A | 46 | 100% |  |  |
| 48 | 1.3.1.2 | **Diagrama de Caso de Uso** | 3d | 2015-01-14 A | 2015-01-16 A | 44 | 100% |  |  |
| 49 |  | Criar Diagrama de Casos de Uso | 1d | 2015-01-14 A | 2015-01-14 A |  | 100% |  |  |
| 50 |  | Verificar Diagrama de Casos de Uso | 1d | 2015-01-15 A | 2015-01-15 A | 49 | 100% |  |  |
| 51 |  | Corrigir Diagrama de Casos de Uso | 1d | 2015-01-16 A | 2015-01-16 A | 50 | 100% |  |  |
| 52 | 1.3.1.3 | **Caso de Uso - Expandido** | 6d | 2015-01-19 A | 2015-01-26 A | 48 | 100% |  |  |
| 53 |  | Criar Documento de Casos de Uso Expandido | 2d | 2015-01-19 A | 2015-01-20 A |  | 100% |  |  |
| 54 |  | Verificar Documento de Casos de Uso Expandido | 2d | 2015-01-21 A | 2015-01-22 A | 53 | 100% |  |  |
| 55 |  | Corrigir Caso de Uso Expandido | 2d | 2015-01-23 A | 2015-01-26 A | 54 | 100% |  |  |
| 56 | 1.3.2 | **Diagrama de Sequencia** | 4d | 2015-02-02 | 2015-02-05 | 55 |  | 0d |  |
| 57 |  | Criar Diagrama de Sequência de Sistema | 2d | 2015-02-02 | 2015-02-03 |  |  | 0d |  |
| 58 |  | Verificar Diagrama de Sequência de Sistema | 1d | 2015-02-04 | 2015-02-04 | 57 |  | 0d |  |
| 59 |  | Corrigir Diagrama de Sequência de Sistema | 1d | 2015-02-05 | 2015-02-05 | 58 |  | 0d |  |
| 60 |  | RTF | 1d | 2015-02-06 | 2015-02-06 | 59 |  | 0d |  |
| 61 | 1.3.4 | **Modelo Conceitual** | 4d | 2015-02-06 | 2015-02-11 | 60SS |  | 0d |  |
| 62 |  | Criar Modelo Conceitual | 2d | 2015-02-06 | 2015-02-09 |  |  | 0d |  |
| 63 |  | Verificar Modelo Conceitual | 1d | 2015-02-10 | 2015-02-10 | 62 |  | 0d |  |
| 64 |  | Corrigir Modelo Conceitual | 1d | 2015-02-11 | 2015-02-11 | 63 |  | 0d |  |
| 65 | 1.3.5 | **Diagrama de Colaboração** | 5d | 2015-02-12 | 2015-02-18 | 61 |  | 0d |  |
| 66 |  | Criar Diagrama de Colaboração (Parte 1.1) | 3d | 2015-02-12 | 2015-02-16 |  |  | 0d |  |
| 67 |  | Verificar Diagrama de Colaboração (Parte 1.1) | 1d | 2015-02-17 | 2015-02-17 | 66 |  | 0d |  |
| 68 |  | Corrigir Diagrama de Colaboração (Parte 1.1) | 1d | 2015-02-18 | 2015-02-18 | 67 |  | 0d |  |
| 69 | 1.3.6 | **Diagrama de Classe** | 5d | 2015-02-19 | 2015-02-25 | 65 |  | 0d |  |
| 70 |  | Criar Diagrama de Classes (Parte 1.1) | 3d | 2015-02-19 | 2015-02-23 |  |  | 0d |  |

| ID | WBS | Task | Duration | Start | Finish | Predecessors | Total float | Constraint |
| --- | --- | --- | --- | --- | --- | --- | --- | --- |
| 71 |  | Verificar Diagrama de Classes (Parte 1.1) | 1d | 2015-02-24 | 2015-02-24 | 70 | 0d |  |
| 72 |  | Corrigir Diagrama de Classes (Parte 1.1) | 1d | 2015-02-25 | 2015-02-25 | 71 | 0d |  |
| 73 | 1.3.7 | **Codificação - Parte 2** | 6d | 2015-02-26 | 2015-03-05 | 69 | 0d |  |
| 74 |  | Codificar (Parte 1) | 4d | 2015-02-26 | 2015-03-03 |  | 0d |  |
| 75 |  | Verificar Codificação (Parte 1) | 1d | 2015-03-04 | 2015-03-04 | 74 | 0d |  |
| 76 |  | Corrigir Codificação (Parte 1) | 1d | 2015-03-05 | 2015-03-05 | 75 | 0d |  |
| 77 |  | RTF - FINAL | 1d | 2015-03-06 | 2015-03-06 | 42 | 0d |  |
| 78 |  | Teste de Software | 1d | 2015-03-09 | 2015-03-09 | 77 | 0d |  |
| 79 |  | Corrigir Codificação | 1d | 2015-03-10 | 2015-03-10 | 78 | 0d | start no earlier than 2015-02-09 |
| 80 |  | Apresentação - Projeto | 1d | 2015-03-11 | 2015-03-11 | 79 | 0d |  |

## Version 2 (saved 2015-03-25)

Note of the change: planejamento versão final

Last finish 2015-03-11 → 2015-03-26 (+15d). Complete tasks 22 → 59.

Added:

| ID | Task | Duration | Start | Finish | Constraint |
| --- | --- | --- | --- | --- | --- |
| 38 | RTF | 1d | 2015-01-22 A | 2015-01-22 A | start no earlier than 2015-01-05 |

Changed:

| ID | Task | Start | Finish | Duration | Complete | Total float | Predecessors | Other |
| --- | --- | --- | --- | --- | --- | --- | --- | --- |
| 1 | **Projeto 3** |  | 2015-03-11 → 2015-03-26 A (+15d) | 51d → 62d | 42% → 100% | 0d → none |  |  |
| 7 | **CICLO I - 4 casos de uso** |  | 2015-03-05 A |  | 38% → 100% | 4d → none |  |  |
| 21 | **Diagrama de Sequencia** | 2015-02-02 A | 2015-02-05 A |  | 0% → 100% | 4d → none |  |  |
| 22 | Criar Diagrama de Sequência de Sistema | 2015-02-02 A | 2015-02-03 A |  | 0% → 100% | 4d → none |  |  |
| 23 | Verificar Diagrama de Sequência de Sistema | 2015-02-04 A | 2015-02-04 A |  | 0% → 100% | 4d → none |  |  |
| 24 | Corrigir Diagrama de Sequência de Sistema | 2015-02-05 A | 2015-02-05 A |  | 0% → 100% | 4d → none |  |  |
| 25 | RTF | 2015-02-06 A | 2015-02-06 A |  | 0% → 100% | 4d → none |  |  |
| 26 | **Modelo Conceitual** | 2015-02-06 A | 2015-02-11 A |  | 0% → 100% | 4d → none |  |  |
| 27 | Criar Modelo Conceitual | 2015-02-06 A | 2015-02-09 A |  | 0% → 100% | 4d → none |  |  |
| 28 | Verificar Modelo Conceitual | 2015-02-10 A | 2015-02-10 A |  | 0% → 100% | 4d → none |  |  |
| 29 | Corrigir Modelo Conceitual | 2015-02-11 A | 2015-02-11 A |  | 0% → 100% | 4d → none |  |  |
| 30 | **Diagrama de Colaboração** | 2015-02-12 A | 2015-02-18 A |  | 0% → 100% | 4d → none |  |  |
| 31 | Criar Diagrama de Colaboração (Parte 1.1) | 2015-02-12 A | 2015-02-16 A |  | 0% → 100% | 4d → none |  |  |
| 32 | Verificar Diagrama de Colaboração (Parte 1.1) | 2015-02-17 A | 2015-02-17 A |  | 0% → 100% | 4d → none |  |  |
| 33 | Corrigir Diagrama de Colaboração (Parte 1.1) | 2015-02-18 A | 2015-02-18 A |  | 0% → 100% | 4d → none |  |  |
| 34 | **Diagrama de Classe** | 2015-02-19 A | 2015-02-25 A |  | 0% → 100% | 4d → none |  |  |
| 35 | Criar Diagrama de Classes (Parte 1.1) | 2015-02-19 A | 2015-02-23 A |  | 0% → 100% | 4d → none |  |  |
| 36 | Verificar Diagrama de Classes (Parte 1.1) | 2015-02-24 A | 2015-02-24 A |  | 0% → 100% | 4d → none |  |  |
| 37 | Corrigir Diagrama de Classes (Parte 1.1) | 2015-02-25 A | 2015-02-25 A |  | 0% → 100% | 4d → none |  |  |
| 39 | **Codificação - Parte 1** | 2015-02-26 A | 2015-03-05 A |  | 0% → 100% | 4d → none |  |  |
| 40 | Codificar (Parte 1) | 2015-02-26 A | 2015-03-03 A |  | 0% → 100% | 4d → none |  |  |
| 41 | Verificar Codificação (Parte 1) | 2015-03-04 A | 2015-03-04 A |  | 0% → 100% | 4d → none |  |  |
| 42 | Corrigir Codificação (Parte 1) | 2015-03-05 A | 2015-03-05 A |  | 0% → 100% | 4d → none |  |  |
| 43 | **CICLO II - 4 Casos de Uso** |  | 2015-03-05 → 2015-03-12 A (+7d) | 39d → 44d | 38% → 100% | 0d → none | 2 → 2, 38SS |  |
| 57 | **Diagrama de Sequencia** | 2015-02-02 A | 2015-02-05 A |  | 0% → 100% | 0d → none |  |  |
| 58 | Criar Diagrama de Sequência de Sistema | 2015-02-02 A | 2015-02-03 A |  | 0% → 100% | 0d → none |  |  |
| 59 | Verificar Diagrama de Sequência de Sistema | 2015-02-04 A | 2015-02-04 A |  | 0% → 100% | 0d → none |  | resources none → Thiago - SQA |
| 60 | Corrigir Diagrama de Sequência de Sistema | 2015-02-05 A | 2015-02-05 A |  | 0% → 100% | 0d → none |  |  |
| 61 | RTF | 2015-02-06 → 2015-02-05 A (-1d) | 2015-02-06 → 2015-02-05 A (-1d) |  | 0% → 100% | 0d → none |  |  |
| 62 | **Modelo Conceitual** | 2015-02-06 A | 2015-02-11 A |  | 0% → 100% | 0d → none |  |  |
| 63 | Criar Modelo Conceitual | 2015-02-06 A | 2015-02-09 A |  | 0% → 100% | 0d → none |  |  |
| 64 | Verificar Modelo Conceitual | 2015-02-10 A | 2015-02-10 A |  | 0% → 100% | 0d → none |  |  |
| 65 | Corrigir Modelo Conceitual | 2015-02-11 A | 2015-02-11 A |  | 0% → 100% | 0d → none |  |  |
| 66 | **Diagrama de Colaboração** | 2015-02-12 A | 2015-02-18 A |  | 0% → 100% | 0d → none |  |  |
| 67 | Criar Diagrama de Colaboração (Parte 1.1) | 2015-02-12 A | 2015-02-16 A |  | 0% → 100% | 0d → none |  |  |
| 68 | Verificar Diagrama de Colaboração (Parte 1.1) | 2015-02-17 A | 2015-02-17 A |  | 0% → 100% | 0d → none |  |  |
| 69 | Corrigir Diagrama de Colaboração (Parte 1.1) | 2015-02-18 A | 2015-02-18 A |  | 0% → 100% | 0d → none |  |  |
| 70 | **Diagrama de Classe** | 2015-02-19 A | 2015-02-25 → 2015-02-26 A (+1d) | 5d → 6d | 0% → 100% | 0d → none |  |  |
| 71 | Criar Diagrama de Classes (Parte 1.1) | 2015-02-19 A | 2015-02-23 A |  | 0% → 100% | 0d → none |  |  |
| 72 | Verificar Diagrama de Classes (Parte 1.1) | 2015-02-24 A | 2015-02-24 → 2015-02-26 A (+2d) | 1d → 3d | 0% → 100% | 0d → none |  |  |
| 73 | Corrigir Diagrama de Classes (Parte 1.1) | 2015-02-25 A | 2015-02-25 → 2015-02-26 A (+1d) | 1d → 2d | 0% → 100% | 0d → none |  |  |
| 74 | **Codificação - Parte 2** | 2015-02-26 → 2015-02-27 A (+1d) | 2015-03-05 → 2015-03-12 A (+7d) | 6d → 10d | 0% → 100% | 0d → none |  |  |
| 75 | Codificar (Parte 1) | 2015-02-26 → 2015-02-27 A (+1d) | 2015-03-03 → 2015-03-06 A (+3d) | 4d → 6d | 0% → 100% | 0d → none |  |  |
| 76 | Verificar Codificação (Parte 1) | 2015-03-04 → 2015-03-09 A (+5d) | 2015-03-04 → 2015-03-10 A (+6d) | 1d → 2d | 0% → 100% | 0d → none |  |  |
| 77 | Corrigir Codificação (Parte 1) | 2015-03-05 → 2015-03-11 A (+6d) | 2015-03-05 → 2015-03-12 A (+7d) | 1d → 2d | 0% → 100% | 0d → none |  |  |
| 78 | RTF - FINAL DA DUPLA | 2015-03-06 → 2015-03-13 A (+7d) | 2015-03-06 → 2015-03-13 A (+7d) |  | 0% → 100% | 0d → none |  | was named RTF - FINAL |
| 79 | Teste de Software | 2015-03-09 → 2015-03-16 A (+7d) | 2015-03-09 → 2015-03-19 A (+10d) | 1d → 4d | 0% → 100% | 0d → none |  |  |
| 80 | Corrigir Codificação | 2015-03-10 → 2015-03-20 A (+10d) | 2015-03-10 → 2015-03-25 A (+15d) | 1d → 4d | 0% → 100% | 0d → none |  |  |
| 81 | Apresentação - Projeto | 2015-03-11 → 2015-03-26 A (+15d) | 2015-03-11 → 2015-03-26 A (+15d) |  | 0% → 100% | 0d → none |  |  |
